Schedule from MS Project, 2022-01-03 to 2022-03-09, costs in €.

## Calendars

- Standard: Mon-Fri 08:00-12:00, 13:00-17:00; Sat-Sun off.

## Resources

| Resource | Rate |
| --- | --- |
| Alexandre | 22 |
| Alfredo |  |
| Ana | 40 |
| António |  |
| Félix | 23 |
| Guilherme | 26 |
| Horácio | 34 |
| João | 32 |
| Lívio | 24 |
| Lucas | 18 |
| Lucinda | 22 |
| Marco | 22 |
| Paulo | 44 |
| Pedro | 32 |
| Susana |  |
| Teodoro | 14 |
| Core Team | 74.2 |

## Schedule

| ID | WBS | Task | Duration | Start | Finish | Predecessors | Total slack | Free slack | Resources | Work | Cost |
| --- | --- | --- | --- | --- | --- | --- | --- | --- | --- | --- | --- |
| 1 | 1 | **PROJETO** | 47.63d | 2022-01-03 | 2022-03-09 |  | 0d |  | Core Team | 3019.08h | 84,198.97 |
| 2 | 1.1 | 1 - Planeamento inicial | 5.15d | 2022-01-03 | 2022-01-10 |  | 0d |  | Alfredo [90%]; António; Susana [80%] | 111.27h |  |
| 3 | 1.2 | 2 - Acreditação | 2.93d | 2022-01-10 | 2022-01-13 | 2 | 6.92d | 0d | Alfredo [90%]; Lívio | 44.49h | 562.08 |
| 4 | 1.3 | 3 - Plano de marketing | 13.17d | 2022-01-10 | 2022-01-27 | 2 | 0d |  | Horácio [80%]; Marco | 140.09h | 4,093.1 |
| 5 | 1.4 | 4 - Patrocínios | 9.2d | 2022-01-10 | 2022-01-21 | 2 | 3.97d | 0d | Ana; Susana [80%]; António | 161.28h | 1,310.8 |
| 6 | 1.5 | 5 - Planeamento financeiro | 5.72d | 2022-01-27 | 2022-02-04 | 4, 5 | 0d |  | João; Paulo | 91.6h | 3,480.8 |
| 7 | 1.6 | 6 - Plano do evento | 12.22d | 2022-02-04 | 2022-02-22 | 3, 6 | 0d |  | Guilherme; Lucas [70%]; Pedro [80%] | 166.71h | 4,057.82 |
| 8 | 1.7 | 7 - Logística | 14.01d | 2022-02-04 | 2022-02-24 | 6 | 4.98d | 0.73d | Paulo; Susana [80%]; Lívio; Alexandre | 373.71h | 9,721.68 |
| 9 | 1.8 | 8 - Protocolos | 18.75d | 2022-02-04 | 2022-03-02 | 6 | 2.19d |  | Ana; António; João | 362.88h | 10,541.12 |
| 10 | 1.9 | 9 - Plano de comunicação | 5.12d | 2022-01-21 | 2022-01-28 | 5 | 10.53d |  | João; Susana [80%]; António | 89h | 490.24 |
| 11 | 1.10 | 10 - Transmissão televisiva | 2.69d | 2022-03-02 | 2022-03-04 | 7, 10 | 0d |  | Ana; Marco; Alfredo [90%]; António; Horácio [80%] | 71.47h | 1,356.06 |
| 12 | 1.11 | 11 - Plano de risco | 11.84d | 2022-01-10 | 2022-01-25 | 2 | 1.46d | 0d | Lívio; Lucinda [80%]; Pedro [80%] | 134.93h | 3,520.92 |
| 13 | 1.12 | 12 - Serviços médicos | 9.05d | 2022-02-04 | 2022-02-17 | 6 | 9.94d | 5.69d | Félix; Horácio [80%]; Teodoro | 181.2h | 4,154.59 |
| 14 | 1.13 | 13 - Transportes | 21.79d | 2022-01-25 | 2022-02-24 | 12 | 4.25d | 0d | Lucinda [80%]; Marco; Pedro [80%]; Alfredo [90%] | 457.6h | 7,437.84 |
| 15 | 1.14 | 14 - Equipamentos | 1.95d | 2022-02-24 | 2022-02-28 | 8, 13, 14 | 4.25d |  | Susana [80%]; Paulo | 28h | 684.64 |
| 16 | 1.15 | 15 - Teste de serviços | 1.49d | 2022-03-04 | 2022-03-08 | 9, 11, 15 | 0d |  | Ana; Paulo; Susana [80%]; Alfredo [90%]; João | 55.8h | 1,376.92 |
| 17 | 1.16 | 16 - Documentação | 15.65d | 2022-01-13 | 2022-02-03 | 3 | 22.74d |  | Alfredo [90%]; Guilherme | 123.2h | 1,815.06 |
| 18 | 1.17 | 17 - Aprovação final | 1.17d | 2022-03-08 | 2022-03-09 | 16, 17 | 0d |  | Ana; João; Paulo; Pedro [80%]; António | 44.8h | 1,321.64 |
